# Mezeo for BlackBerry - Project Plan

Schedule from MS Project, 2008-06-09 to 2008-09-01.
Extentia Information Technology

## Calendars

- Standard: Mon-Fri 08:00-12:00, 13:00-17:00; Sat-Sun off. Exceptions (off unless hours are given): 2008-08-15 (Independence Day Holiday).

## Resources

| Resource |
| --- |
| D1 |
| D2 |
| T1 |
| D3 |
| Client |
| 5 |
| D4 |
| 1 |

## Schedule

| ID | WBS | Task | Type | Duration | Start | Finish | Predecessors | Total slack | Constraint | Resources | Work |
| --- | --- | --- | --- | --- | --- | --- | --- | --- | --- | --- | --- |
| 1 | 1 | **Mezeo for BlackBerry Project Plan** |  | 60d | 2008-06-09 | 2008-09-01 |  | 0d |  |  | 1920h |
| 2 | 1.1 | **Dependency 0** |  | 0d | 2008-06-27 | 2008-06-27 |  | 46d |  |  |  |
| 3 | 1.1.1 | Icons and images | milestone | 0d | 2008-06-27 | 2008-06-27 |  | 46d | start no earlier than 2008-06-27 |  |  |
| 4 | 1.2 | **Design/Documentation Phase** |  | 15d | 2008-06-09 | 2008-06-27 |  | 0d |  |  | 440h |
| 5 | 1.2.1 | Review of SRS |  | 3d | 2008-06-09 | 2008-06-11 |  | 0d | start no earlier than 2008-06-09 | D1; D2; D3 | 72h |
| 6 | 1.2.2 | Technical Design and Review |  | 3d | 2008-06-12 | 2008-06-16 | 5 | 0d | start no earlier than 2008-06-09 | D1; D2; D3 | 72h |
| 7 | 1.2.3 | Create Design document |  | 4d | 2008-06-17 | 2008-06-20 | 6 | 0d | finish no earlier than 2008-06-20 | D1; D2; D3 | 96h |
| 8 | 1.2.4 | Mezeo server access from BB simulator |  | 5d | 2008-06-23 | 2008-06-27 |  | 0d | start no earlier than 2008-06-23 | D2; D3 | 80h |
| 9 | 1.2.5 | Create Test Plan |  | 10d | 2008-06-16 | 2008-06-27 |  | 0d | start no earlier than 2008-06-16 | T1 | 80h |
| 10 | 1.2.6 | GUI Prototype |  | 5d | 2008-06-23 | 2008-06-27 | 7 | 0d | finish no earlier than 2008-06-27 | D1 | 40h |
| 11 | 1.3 | **Milestone 0** |  | 0d | 2008-06-30 | 2008-06-30 |  | 45d |  |  |  |
| 12 | 1.3.1 | **Milestone 0 Deliverables** |  | 0d | 2008-06-30 | 2008-06-30 | 10 | 45d |  |  |  |
| 13 | 1.3.1.1 | GUI Prototype Round 1 | milestone | 0d | 2008-06-30 | 2008-06-30 |  | 45d | start no earlier than 2008-06-30 |  |  |
| 14 | 1.3.1.2 | Finalized Design document | milestone | 0d | 2008-06-30 | 2008-06-30 | 4 | 45d | start no earlier than 2008-06-30 |  |  |
| 15 | 1.3.1.3 | Final Acceptance Test Plan | milestone | 0d | 2008-06-30 | 2008-06-30 |  | 49d | start no earlier than 2008-06-30 |  |  |
| 16 | 1.4 | **Dependency 1** |  | 0d | 2008-07-02 | 2008-07-02 |  | 43d |  |  |  |
| 17 | 1.4.1 | Feedback on GUI Prototype | milestone | 0d | 2008-07-02 | 2008-07-02 |  | 43d | start no earlier than 2008-07-02 | Client |  |
| 18 | 1.4.2 | Feedback on design document | milestone | 0d | 2008-07-02 | 2008-07-02 |  | 43d | start no earlier than 2008-07-02 | Client |  |
| 19 | 1.4.3 | Final date for receiving logos and images | milestone | 0d | 2008-07-02 | 2008-07-02 |  | 43d | start no earlier than 2008-07-02 | Client |  |
| 20 | 1.4.4 | Feedback on Acceptance Test Plan | milestone | 0d | 2008-07-02 | 2008-07-02 |  | 43d | start no earlier than 2008-07-02 | Client |  |
| 21 | 1.5 | **Mezeo Main** |  | 12d | 2008-06-30 | 2008-07-15 | 4 | 0d |  |  | 96h |
| 22 | 1.5.1 | Code for Mezeo Main |  | 4d | 2008-06-30 | 2008-07-03 | 4 | 0d |  | D1 | 32h |
| 23 | 1.5.2 | Implement ExceptionHandler |  | 3d | 2008-07-04 | 2008-07-08 | 22 | 0d |  | D1 | 24h |
| 24 | 1.5.3 | Handling Localization |  | 2d | 2008-07-09 | 2008-07-10 | 23 | 0d |  | D1 | 16h |
| 25 | 1.5.4 | Multi-threading |  | 2d | 2008-07-11 | 2008-07-14 | 24 | 0d |  | D1 | 16h |
| 26 | 1.5.5 | Unit Testing |  | 1d | 2008-07-15 | 2008-07-15 | 25 | 0d |  | D1 | 8h |

| ID | WBS | Task | Type | Duration | Start | Finish | Predecessors | Total slack | Constraint | Resources | Work |
| --- | --- | --- | --- | --- | --- | --- | --- | --- | --- | --- | --- |
| 27 | 1.6 | **Mezeo Core** |  | 5d | 2008-06-30 | 2008-07-04 | 4 | 0d |  |  | 40h |
| 28 | 1.6.1 | Application Flow Logic Phase 1 |  | 2d | 2008-06-30 | 2008-07-01 | 4 | 0d |  | D2 | 16h |
| 29 | 1.6.2 | Model Object for Users |  | 1d | 2008-07-02 | 2008-07-02 | 28 | 0d |  | D2 | 8h |
| 30 | 1.6.3 | Model Object for Errors |  | 1d | 2008-07-03 | 2008-07-03 | 29 | 0d |  | D2 | 8h |
| 31 | 1.6.4 | Unit Testing |  | 1d | 2008-07-04 | 2008-07-04 | 30 | 0d |  | D2 | 8h |
| 32 | 1.7 | **Communication Engine** |  | 8d | 2008-06-30 | 2008-07-09 | 4 | 0d |  |  | 72h |
| 33 | 1.7.1 | Mezeo API Wrapper structure |  | 4d | 2008-06-30 | 2008-07-03 | 4 | 0d |  | D3 | 32h |
| 34 | 1.7.2 | Operations for User Resource Type (login, info) |  | 2d | 2008-07-04 | 2008-07-07 | 33 | 0d |  | D3 | 16h |
| 35 | 1.7.3 | HTTP Implementation |  | 2d | 2008-07-07 | 2008-07-08 | 31 | 0d |  | D2 | 16h |
| 36 | 1.7.4 | Unit Testing |  | 1d | 2008-07-09 | 2008-07-09 | 35 | 0d |  | D2 | 8h |
| 37 | 1.8 | **GUI Engine** |  | 4d | 2008-07-08 | 2008-07-11 |  | 0d |  |  | 48h |
| 38 | 1.8.1 | Login Screen |  | 1d | 2008-07-08 | 2008-07-08 | 34 | 0d |  | D3 | 8h |
| 39 | 1.8.2 | My Account Screen |  | 2d | 2008-07-10 | 2008-07-11 | 29, 32 | 0d |  | D2 | 16h |
| 40 | 1.8.3 | Notifications and Alerts |  | 0.5d | 2008-07-09 | 2008-07-09 | 38 | 0d |  | D3 | 4h |
| 41 | 1.8.4 | Context sensitive menus |  | 1.5d | 2008-07-09 | 2008-07-10 | 40 | 0d |  | D3 | 12h |
| 42 | 1.8.5 | Unit Testing |  | 1d | 2008-07-11 | 2008-07-11 | 41 | 0d |  | D3 | 8h |
| 43 | 1.9 | Code Review |  | 2d | 2008-07-16 | 2008-07-17 | 21, 4 | 35d |  | D4 | 16h |
| 44 | 1.10 | **Testing** |  | 10d | 2008-06-30 | 2008-07-11 |  | 3d |  |  | 80h |
| 45 | 1.10.1 | Testing on OS 4.2 |  | 10d | 2008-06-30 | 2008-07-11 |  | 3d | start no earlier than 2008-06-30 | T1 | 80h |
| 46 | 1.11 | Milestone 1 | milestone | 0d | 2008-07-15 | 2008-07-15 |  | 34d | start no earlier than 2008-07-15 |  |  |
| 47 | 1.12 | **Dependency 2** |  | 0d | 2008-07-18 | 2008-07-18 |  | 31d |  |  |  |
| 48 | 1.12.1 | Feedback on Milestone 1 | milestone | 0d | 2008-07-18 | 2008-07-18 |  | 31d | start no earlier than 2008-07-18 | Client |  |
| 49 | 1.12.2 | Wireframes for Orientation Wizards | milestone | 0d | 2008-07-18 | 2008-07-18 |  | 31d | start no earlier than 2008-07-18 |  |  |
| 50 | 1.13 | **Mezeo Core** |  | 7d | 2008-07-16 | 2008-07-24 |  | 0d |  |  | 56h |
| 51 | 1.13.1 | Application Flow Logic Phase 2 |  | 3d | 2008-07-16 | 2008-07-18 | 26 | 0d |  | D1 | 24h |
| 52 | 1.13.2 | Model Object for Files |  | 2d | 2008-07-21 | 2008-07-22 | 51 | 0d | start no earlier than 2008-07-07 | D1 | 16h |
| 53 | 1.13.3 | Model Object for Projects |  | 0.5d | 2008-07-23 | 2008-07-23 | 52 | 0d |  | D1 | 4h |
| 54 | 1.13.4 | Model Object for Applications |  | 0.5d | 2008-07-23 | 2008-07-23 | 53 | 0d |  | D1 | 4h |
| 55 | 1.13.5 | Unit Testing |  | 1d | 2008-07-24 | 2008-07-24 | 54 | 0d |  | D1 | 8h |

| ID | WBS | Task | Type | Duration | Start | Finish | Predecessors | Total slack | Free slack | Constraint | Resources | Work |
| --- | --- | --- | --- | --- | --- | --- | --- | --- | --- | --- | --- | --- |
| 56 | 1.14 | **Communication Engine** |  | 5d | 2008-07-14 | 2008-07-18 | 32 | 2d | 6d |  |  | 40h |
| 57 | 1.14.1 | Operations for File/Folder Resource Type |  | 2d | 2008-07-14 | 2008-07-15 | 39 | 2d | 0d | start no earlier than 2008-07-08 | D2 | 16h |
| 58 | 1.14.2 | Operations for Project Resource Type |  | 1d | 2008-07-16 | 2008-07-16 | 57 | 2d | 0d |  | D2 | 8h |
| 59 | 1.14.3 | Operations for Public Resource Type |  | 1d | 2008-07-17 | 2008-07-17 | 58 | 2d | 0d |  | D2 | 8h |
| 60 | 1.14.4 | Unit Testing |  | 1d | 2008-07-18 | 2008-07-18 | 59 | 2d | 0d |  | D2 | 8h |
| 61 | 1.15 | **GUI Engine** |  | 12d | 2008-07-14 | 2008-07-29 | 37 | 0d |  |  |  | 120h |
| 62 | 1.15.1 | Carousel widget (navigation, graphics, invoking screens) |  | 4d | 2008-07-14 | 2008-07-17 | 42 | 0d |  | start no earlier than 2008-07-07 | D3 | 32h |
| 63 | 1.15.2 | File/folder operations (listing, upload, download, delete) |  | 5d | 2008-07-21 | 2008-07-25 | 60 | 2d | 0d | start no earlier than 2008-07-14 | D2 | 40h |
| 64 | 1.15.3 | Home Screen - MRS/MRF functionality |  | 3d | 2008-07-25 | 2008-07-29 | 55 | 0d |  | start no earlier than 2008-07-10 | D1 | 24h |
| 65 | 1.15.4 | Handling Progress bar |  | 2d | 2008-07-18 | 2008-07-21 | 62 | 0d |  |  | D3 | 16h |
| 66 | 1.15.5 | Unit Testing |  | 1d | 2008-07-28 | 2008-07-28 | 63 | 2d | 0d |  | D2 | 8h |
| 67 | 1.16 | **Device Manager** |  | 2d | 2008-07-22 | 2008-07-23 |  | 0d |  |  |  | 16h |
| 68 | 1.16.1 | Local File Manager |  | 2d | 2008-07-22 | 2008-07-23 | 65 | 0d |  |  | D3 | 16h |
| 69 | 1.17 | **Incorporating Client Feedback** |  | 3d | 2008-07-24 | 2008-07-28 |  | 0d |  |  |  | 24h |
| 70 | 1.17.1 | For GUI Engine |  | 3d | 2008-07-24 | 2008-07-28 | 68 | 0d |  | start no earlier than 2008-07-14 | D3 | 24h |
| 71 | 1.18 | Code Review |  | 3d | 2008-07-18 | 2008-07-22 | 32 | 28d |  | start no earlier than 2008-07-18 | D4 | 24h |
| 72 | 1.19 | **Testing** |  | 10d | 2008-07-17 | 2008-07-30 |  | 0d |  |  |  | 80h |
| 73 | 1.19.1 | Testing on OS 4.2, 4.3 |  | 10d | 2008-07-17 | 2008-07-30 | 44 | 0d |  | finish no earlier than 2008-07-30 | T1 | 80h |
| 74 | 1.20 | Milestone 2 |  | 1d | 2008-07-30 | 2008-07-30 | 50, 56, 61, 69 | 22d | 2d | start no earlier than 2008-07-30 |  |  |
| 75 | 1.21 | **Dependency 3** |  | 0d | 2008-08-04 | 2008-08-04 |  | 20d |  |  |  |  |
| 76 | 1.21.1 | Feedback on Milestone 2 | milestone | 0d | 2008-08-04 | 2008-08-04 | 74 | 20d |  | start no earlier than 2008-08-04 | Client |  |
| 77 | 1.22 | **Mezeo Core** |  | 3d | 2008-07-30 | 2008-08-01 | 50 | 0d |  |  |  | 24h |
| 78 | 1.22.1 | Model Object for Potluck |  | 1d | 2008-07-30 | 2008-07-30 | 64 | 0d |  | start no earlier than 2008-07-15 | D1 | 8h |
| 79 | 1.22.2 | Model Object for Groups |  | 1d | 2008-07-31 | 2008-07-31 | 78 | 0d |  | start no earlier than 2008-07-16 | D1 | 8h |
| 80 | 1.22.3 | Unit Testing |  | 1d | 2008-08-01 | 2008-08-01 | 79 | 0d |  |  | D1 | 8h |

| ID | WBS | Task | Type | Duration | Start | Finish | Predecessors | Total slack | Free slack | Constraint | Resources | Work |
| --- | --- | --- | --- | --- | --- | --- | --- | --- | --- | --- | --- | --- |
| 81 | 1.23 | **Communication Engine** |  | 3d | 2008-07-29 | 2008-07-31 | 56 | 0d |  |  |  | 24h |
| 82 | 1.23.1 | Operations for Potluck Resource Type |  | 1d | 2008-07-29 | 2008-07-29 | 70 | 0d |  | start no earlier than 2008-07-16 | D3 | 8h |
| 83 | 1.23.2 | Operations for Groups Resource Type |  | 1d | 2008-07-30 | 2008-07-30 | 82 | 0d |  |  | D3 | 8h |
| 84 | 1.23.3 | Unit Testing |  | 1d | 2008-07-31 | 2008-07-31 | 83 | 0d |  |  | D3 | 8h |
| 85 | 1.24 | **GUI Engine** |  | 8d | 2008-07-29 | 2008-08-07 |  | 2d |  |  |  | 112h |
| 86 | 1.24.1 | File Sharing |  | 7d | 2008-07-29 | 2008-08-06 | 66 | 2d | 0d | start no earlier than 2008-07-29 | D2 | 56h |
| 87 | 1.24.2 | New Members |  | 3d | 2008-08-01 | 2008-08-05 | 84 | 0d |  |  | D3 | 24h |
| 88 | 1.24.3 | Project listing |  | 1.5d | 2008-08-04 | 2008-08-05 | 80 | 0d |  | start no earlier than 2008-07-17 | D1 | 12h |
| 89 | 1.24.4 | Context Menus |  | 1.5d | 2008-08-05 | 2008-08-06 | 88 | 0d |  |  | D1 | 12h |
| 90 | 1.24.5 | Unit Testing |  | 1d | 2008-08-07 | 2008-08-07 | 86 | 4d | 0d |  | D2 | 8h |
| 91 | 1.25 | **Device Manager** |  | 4d | 2008-08-06 | 2008-08-11 |  | 0d |  |  |  | 32h |
| 92 | 1.25.1 | Native Application Manager |  | 3d | 2008-08-06 | 2008-08-08 | 87 | 0d |  |  | D3 | 24h |
| 93 | 1.25.2 | Unit Testing |  | 1d | 2008-08-11 | 2008-08-11 | 92 | 0d |  |  | D3 | 8h |
| 94 | 1.26 | Code Review |  | 3d | 2008-08-05 | 2008-08-07 |  | 16d |  | start no earlier than 2008-08-05 | D4 | 24h |
| 95 | 1.27 | **Incorporating Client Feedback and Code Review Updates** |  | 4d | 2008-08-07 | 2008-08-12 |  | 0d |  |  |  | 32h |
| 96 | 1.27.1 | Communication Engine Updates |  | 1d | 2008-08-08 | 2008-08-08 | 90 | 4d | 0d |  | D2 | 8h |
| 97 | 1.27.2 | Mezeo Core and Device Manager Updates |  | 1d | 2008-08-12 | 2008-08-12 | 93 | 0d |  |  | D3 | 8h |
| 98 | 1.27.3 | GUI Engine Updates |  | 2d | 2008-08-07 | 2008-08-08 | 89 | 0d |  |  | D1 | 16h |
| 99 | 1.28 | **Testing** |  | 10d | 2008-07-31 | 2008-08-13 | 72 | 0d |  |  |  | 80h |
| 100 | 1.28.1 | Testing on OS 4.2, 4.3, 4.5 |  | 10d | 2008-07-31 | 2008-08-13 | 72 | 0d |  |  | T1 | 80h |
| 101 | 1.29 | Milestone 3 | milestone | 0d | 2008-08-14 | 2008-08-14 |  | 11d |  | finish no earlier than 2008-08-14 |  |  |
| 102 | 1.30 | **Dependency 4** |  | 0d | 2008-08-20 | 2008-08-20 |  | 9d |  |  |  |  |
| 103 | 1.30.1 | Feedback on Milestone 3 | milestone | 0d | 2008-08-20 | 2008-08-20 |  | 9d |  | start no earlier than 2008-08-20 | Client |  |
| 104 | 1.31 | **GUI Engine** |  | 11d | 2008-08-11 | 2008-08-26 |  | 0d |  |  |  | 160h |
| 105 | 1.31.1 | File Sending Via (Bluetooth, Beam, Email, Text) |  | 6d | 2008-08-11 | 2008-08-19 | 98 | 0d |  |  | D1 | 48h |
| 106 | 1.31.2 | Orientation screens and flow |  | 5d | 2008-08-11 | 2008-08-18 | 96 | 4d | 0d |  | D2 | 40h |
| 107 | 1.31.3 | Context menus for screens |  | 2d | 2008-08-13 | 2008-08-14 | 97 | 0d |  |  | D3 | 16h |
| 108 | 1.31.4 | Error handling |  | 3d | 2008-08-20 | 2008-08-22 | 105 | 0d |  |  | D1 | 24h |
| 109 | 1.31.5 | Information Messages |  | 2d | 2008-08-19 | 2008-08-20 | 106 | 4d | 0d |  | D2 | 16h |
| 110 | 1.31.6 | Unit Testing |  | 2d | 2008-08-25 | 2008-08-26 | 108 | 0d |  |  | D1 | 16h |

| ID | WBS | Task | Type | Duration | Start | Finish | Predecessors | Total slack | Free slack | Constraint | Resources | Work |
| --- | --- | --- | --- | --- | --- | --- | --- | --- | --- | --- | --- | --- |
| 111 | 1.32 | **Device Manager** |  | 4d | 2008-08-18 | 2008-08-21 |  | 0d |  |  |  | 32h |
| 112 | 1.32.1 | Persisting applciation data |  | 3d | 2008-08-18 | 2008-08-20 | 107 | 0d |  |  | D3 | 24h |
| 113 | 1.32.2 | Unit Testing |  | 1d | 2008-08-21 | 2008-08-21 | 112 | 0d |  |  | D3 | 8h |
| 114 | 1.33 | Code Review |  | 2d | 2008-08-22 | 2008-08-25 |  | 7d |  | start no earlier than 2008-08-22 | D4 | 16h |
| 115 | 1.34 | **Incorporating Client Feedback and Code Review Updates** |  | 3d | 2008-08-21 | 2008-08-25 |  | 0d |  |  |  | 24h |
| 116 | 1.34.1 | Communication Engine Updates |  | 0.5d | 2008-08-21 | 2008-08-21 | 109 | 2d | 0d |  | D2 | 4h |
| 117 | 1.34.2 | Mezeo Core Updates |  | 0.5d | 2008-08-21 | 2008-08-21 | 116 | 2d | 0d |  | D2 | 4h |
| 118 | 1.34.3 | Device Manager Updates |  | 1d | 2008-08-22 | 2008-08-22 | 113 | 0d |  |  | D3 | 8h |
| 119 | 1.34.4 | GUI Engine Updates |  | 1d | 2008-08-25 | 2008-08-25 | 118 | 0d |  |  | D3 | 8h |
| 120 | 1.35 | **Testing** |  | 8d | 2008-08-14 | 2008-08-26 |  | 0d |  |  |  | 64h |
| 121 | 1.35.1 | Testing on OS 4.2, 4.3, 4.5 |  | 8d | 2008-08-14 | 2008-08-26 | 99 | 0d |  |  | T1 | 64h |
| 122 | 1.36 | Milestone 4 | milestone | 0d | 2008-08-26 | 2008-08-26 |  | 4d |  | finish no earlier than 2008-08-26 |  |  |
| 123 | 1.37 | **Dependency 5** |  | 0d | 2008-08-28 | 2008-08-28 |  | 3d |  |  |  |  |
| 124 | 1.37.1 | Feedback on Milestone 4 | milestone | 0d | 2008-08-28 | 2008-08-28 |  | 3d |  | start no earlier than 2008-08-28 | Client |  |
| 125 | 1.38 | **Final Release** |  | 7d | 2008-08-22 | 2008-09-01 |  | 0d |  |  |  | 112h |
| 126 | 1.38.1 | Bug fixes |  | 5d | 2008-08-22 | 2008-08-28 | 117 | 2d |  |  | D2 | 40h |
| 127 | 1.38.2 | Code review and Client Feedback |  | 5d | 2008-08-26 | 2008-09-01 | 119 | 0d |  |  | D3 | 40h |
| 128 | 1.38.3 | Optimizations |  | 4d | 2008-08-27 | 2008-09-01 | 110 | 0d |  |  | D1 | 32h |
| 129 | 1.39 | **Testing** |  | 4d | 2008-08-27 | 2008-09-01 | 120 | 0d |  |  |  | 32h |
| 130 | 1.39.1 | Testing on OS 4.2, 4.3, 4.5 |  | 4d | 2008-08-27 | 2008-09-01 | 120 | 0d |  |  | T1 | 32h |
| 131 | 1.40 | Milestone 5 | milestone | 0d | 2008-09-01 | 2008-09-01 | 125, 129 | 0d |  | start no earlier than 2008-09-01 |  |  |
